# Cronograma del proyecto — Aplicación Web de Comercio Electrónico (Tiendas ComproYa)

Schedule from MS Project XML, 2026-10-19 to 2026-11-27, 3 hours a day.

## Calendars

- Jornada del equipo (3 h por día, L-V): Mon-Fri 08:00-11:00; Sat-Sun off.

## Resources

| Resource |
| --- |
| Nicolás Santiago Cancimance Pabón |
| Duván Camilo Serrano Rojas |

## Schedule

| ID | WBS | Task | Type | Duration | Start | Finish | Predecessors | Complete | Constraint | Resources |
| --- | --- | --- | --- | --- | --- | --- | --- | --- | --- | --- |
| 1 | 0 | **Aplicación Web de Comercio Electrónico — Tiendas ComproYa** |  | 30d | 2026-10-19 08:00 | 2026-11-27 11:00 |  |  |  |  |
| 2 | ACT-01 | ACT-01 Acta de constitución (entregada antes del inicio) | milestone | 0d | 2026-10-19 08:00 | 2026-10-19 08:00 |  | 100% | start no earlier than 2026-10-19 08:00 |  |
| 3 | ACT-02 | ACT-02 Plan de trabajo y backlog priorizado: planes de requisitos, alcance, cronograma, calidad y ejecución |  | 27d | 2026-10-19 08:00 | 2026-11-24 11:00 |  | 60% | start no earlier than 2026-10-19 08:00 |  |
| 4 | ACT-03 | ACT-03 Seguimiento y control de sprints |  | 29d | 2026-10-19 08:00 | 2026-11-26 11:00 |  | 70% | start no earlier than 2026-10-19 08:00 |  |
| 5 | S1 | **Sprint 1 · Flujo de compra (completado)** |  | 10d | 2026-10-19 08:00 | 2026-10-30 11:00 |  |  |  |  |
| 6 | S1.HU-102 | HU-102 Buscar productos (CU-02) |  | 10d | 2026-10-19 08:00 | 2026-10-30 11:00 |  | 100% | start no earlier than 2026-10-19 08:00 |  |
| 7 | S1.HU-103 | HU-103 Ver unidades disponibles (CU-03) |  | 10d | 2026-10-19 08:00 | 2026-10-30 11:00 |  | 100% | start no earlier than 2026-10-19 08:00 |  |
| 8 | S1.HU-104 | HU-104 Existencias desde el ERP (paquete 1.1.4) (1.1.4) |  | 10d | 2026-10-19 08:00 | 2026-10-30 11:00 |  | 100% | start no earlier than 2026-10-19 08:00 |  |
| 9 | S1.HU-105 | HU-105 Crear cuenta e ingresar (CU-04) |  | 10d | 2026-10-19 08:00 | 2026-10-30 11:00 |  | 100% | start no earlier than 2026-10-19 08:00 |  |
| 10 | S1.HU-106 | HU-106 Consentimiento y supresión (CU-05) |  | 10d | 2026-10-19 08:00 | 2026-10-30 11:00 |  | 100% | start no earlier than 2026-10-19 08:00 |  |
| 11 | S1.HU-107 | HU-107 Administrar carrito (CU-06) |  | 10d | 2026-10-19 08:00 | 2026-10-30 11:00 |  | 100% | start no earlier than 2026-10-19 08:00 |  |
| 12 | S1.HU-108 | HU-108 Confirmar pedido con envío (CU-07) |  | 10d | 2026-10-19 08:00 | 2026-10-30 11:00 |  | 100% | start no earlier than 2026-10-19 08:00 |  |
| 13 | S1.HU-109 | HU-109 Aplicar código de descuento (CU-08) |  | 10d | 2026-10-19 08:00 | 2026-10-30 11:00 |  | 100% | start no earlier than 2026-10-19 08:00 |  |
| 14 | S1.HU-110 | HU-110 Reservar y liberar en el ERP (paquete 1.3.4) (1.3.4) |  | 10d | 2026-10-19 08:00 | 2026-10-30 11:00 |  | 100% | start no earlier than 2026-10-19 08:00 |  |
| 15 | S1.HU-111 | HU-111 Pagar con tarjeta (CU-11) |  | 10d | 2026-10-19 08:00 | 2026-10-30 11:00 |  | 100% | start no earlier than 2026-10-19 08:00 |  |
| 16 | S1.HU-112 | HU-112 Ver comprobante (CU-12) |  | 10d | 2026-10-19 08:00 | 2026-10-30 11:00 |  | 100% | start no earlier than 2026-10-19 08:00 |  |
| 17 | S2 | **Sprint 2 · Flujo gerencial** |  | 10d | 2026-11-02 08:00 | 2026-11-13 11:00 |  |  |  |  |
| 18 | S2.HU-115 | **HU-115 Cancelar pedido (CU-10)** |  | 3.67d | 2026-11-02 08:00 | 2026-11-05 10:00 |  |  |  |  |
| 19 | S2.HU-115.SCRUM-75 | SCRUM-75 Modelado · HU-115 |  | 0.33d | 2026-11-02 08:00 | 2026-11-02 09:00 |  | 100% | start no earlier than 2026-11-02 08:00 | Nicolás Santiago Cancimance Pabón |
| 20 | S2.HU-115.SCRUM-76 | SCRUM-76 Requerimientos · HU-115 |  | 0.33d | 2026-11-02 09:00 | 2026-11-02 10:00 | 19 | 100% |  | Nicolás Santiago Cancimance Pabón |
| 21 | S2.HU-115.SCRUM-77 | SCRUM-77 Diseño · HU-115 |  | 0.67d | 2026-11-02 10:00 | 2026-11-03 09:00 | 20 | 100% |  | Nicolás Santiago Cancimance Pabón |
| 22 | S2.HU-115.SCRUM-78 | SCRUM-78 Implementación · HU-115 |  | 1.33d | 2026-11-03 09:00 | 2026-11-04 10:00 | 21, 12 | 100% |  | Nicolás Santiago Cancimance Pabón |
| 23 | S2.HU-115.SCRUM-79 | SCRUM-79 Pruebas · HU-115 |  | 0.67d | 2026-11-04 10:00 | 2026-11-05 09:00 | 22 | 100% |  | Nicolás Santiago Cancimance Pabón |
| 24 | S2.HU-115.SCRUM-80 | SCRUM-80 Entrega · HU-115 |  | 0.33d | 2026-11-05 09:00 | 2026-11-05 10:00 | 23 | 100% | finish no later than 2026-11-13 11:00 | Nicolás Santiago Cancimance Pabón |

Notes:
- 2: Responsable: Nicolás y Duván. Esfuerzo continuo del entregable 1.5 de la EDT.
- 3: Responsable: Nicolás y Duván. Esfuerzo continuo del entregable 1.5 de la EDT.
- 4: Responsable: Nicolás con Duván. Esfuerzo continuo del entregable 1.5 de la EDT.
- 6: Jira SCRUM-11. Responsable: Nicolás. Horas no registradas por historia: se planifica como ventana del sprint. Subtareas de Jira SCRUM-33 a SCRUM-38 sin horas.
- 7: Jira SCRUM-12. Responsable: Duván. Horas no registradas por historia: se planifica como ventana del sprint. Subtareas de Jira SCRUM-39 a SCRUM-44 sin horas.
- 8: Jira SCRUM-13. Responsable: Nicolás. Horas no registradas por historia: se planifica como ventana del sprint. Subtareas de Jira SCRUM-45 a SCRUM-50 sin horas.
- 9: Jira SCRUM-14. Responsable: Duván. Horas no registradas por historia: se planifica como ventana del sprint. Subtareas de Jira SCRUM-51 a SCRUM-56 sin horas.
- 10: Jira SCRUM-15. Responsable: Nicolás. Horas no registradas por historia: se planifica como ventana del sprint. Subtareas de Jira SCRUM-57 a SCRUM-62 sin horas.
- 11: Jira SCRUM-16. Responsable: Duván. Horas no registradas por historia: se planifica como ventana del sprint.
- 12: Jira SCRUM-17. Responsable: Nicolás. Horas no registradas por historia: se planifica como ventana del sprint.
- 13: Jira SCRUM-18. Responsable: Duván. Horas no registradas por historia: se planifica como ventana del sprint.
- 14: Jira SCRUM-19. Responsable: Nicolás. Horas no registradas por historia: se planifica como ventana del sprint.
- 15: Jira SCRUM-20. Responsable: Duván. Horas no registradas por historia: se planifica como ventana del sprint.
- 16: Jira SCRUM-21. Responsable: Nicolás. Horas no registradas por historia: se planifica como ventana del sprint.
- 18: Jira SCRUM-24. Responsable: Nicolás. Depende de: HU-108.
- 19: Subtarea de Jira SCRUM-75. Responsable: Nicolás.
- 20: Subtarea de Jira SCRUM-76. Responsable: Nicolás.
- 21: Subtarea de Jira SCRUM-77. Responsable: Nicolás.
- 22: Subtarea de Jira SCRUM-78. Responsable: Nicolás.
- 23: Subtarea de Jira SCRUM-79. Responsable: Nicolás.
- 24: Subtarea de Jira SCRUM-80. Responsable: Nicolás.

| ID | WBS | Task | Duration | Start | Finish | Predecessors | Complete | Constraint | Resources |
| --- | --- | --- | --- | --- | --- | --- | --- | --- | --- |
| 25 | S2.HU-116 | **HU-116 Ingresar como Coordinador (paquete 1.2.3) (1.2.3)** | 4.67d | 2026-11-02 08:00 | 2026-11-06 10:00 |  |  |  |  |
| 26 | S2.HU-116.SCRUM-81 | SCRUM-81 Modelado · HU-116 | 0.33d | 2026-11-02 08:00 | 2026-11-02 09:00 |  | 100% | start no earlier than 2026-11-02 08:00 | Duván Camilo Serrano Rojas |
| 27 | S2.HU-116.SCRUM-82 | SCRUM-82 Requerimientos · HU-116 | 0.67d | 2026-11-02 09:00 | 2026-11-02 11:00 | 26 | 100% |  | Duván Camilo Serrano Rojas |
| 28 | S2.HU-116.SCRUM-83 | SCRUM-83 Diseño · HU-116 | 0.67d | 2026-11-03 08:00 | 2026-11-03 10:00 | 27 | 100% |  | Duván Camilo Serrano Rojas |
| 29 | S2.HU-116.SCRUM-84 | SCRUM-84 Implementación · HU-116 | 1.67d | 2026-11-03 10:00 | 2026-11-05 09:00 | 28, 9 | 100% |  | Duván Camilo Serrano Rojas |
| 30 | S2.HU-116.SCRUM-85 | SCRUM-85 Pruebas · HU-116 | 1d | 2026-11-05 09:00 | 2026-11-06 09:00 | 29 | 100% |  | Duván Camilo Serrano Rojas |
| 31 | S2.HU-116.SCRUM-86 | SCRUM-86 Entrega · HU-116 | 0.33d | 2026-11-06 09:00 | 2026-11-06 10:00 | 30 | 100% | finish no later than 2026-11-13 11:00 | Duván Camilo Serrano Rojas |
| 32 | S2.HU-114 | **HU-114 Consultar ventas (CU-09)** | 6.33d | 2026-11-05 10:00 | 2026-11-13 11:00 |  |  |  |  |
| 33 | S2.HU-114.SCRUM-69 | SCRUM-69 Modelado · HU-114 | 0.67d | 2026-11-05 10:00 | 2026-11-06 09:00 | 24 | 100% | start no earlier than 2026-11-02 08:00 | Nicolás Santiago Cancimance Pabón |
| 34 | S2.HU-114.SCRUM-70 | SCRUM-70 Requerimientos · HU-114 | 0.67d | 2026-11-06 09:00 | 2026-11-06 11:00 | 33 | 100% |  | Nicolás Santiago Cancimance Pabón |
| 35 | S2.HU-114.SCRUM-71 | SCRUM-71 Diseño · HU-114 | 1d | 2026-11-09 08:00 | 2026-11-09 11:00 | 34 | 100% |  | Nicolás Santiago Cancimance Pabón |
| 36 | S2.HU-114.SCRUM-72 | SCRUM-72 Implementación · HU-114 | 2.67d | 2026-11-10 08:00 | 2026-11-12 10:00 | 35, 31, 15 | 100% |  | Nicolás Santiago Cancimance Pabón |
| 37 | S2.HU-114.SCRUM-73 | SCRUM-73 Pruebas · HU-114 | 1d | 2026-11-12 10:00 | 2026-11-13 10:00 | 36 | 100% |  | Nicolás Santiago Cancimance Pabón |
| 38 | S2.HU-114.SCRUM-74 | SCRUM-74 Entrega · HU-114 | 0.33d | 2026-11-13 10:00 | 2026-11-13 11:00 | 37 | 100% | finish no later than 2026-11-13 11:00 | Nicolás Santiago Cancimance Pabón |
| 39 | S2.HU-113 | **HU-113 Consultar mis pedidos (CU-09)** | 4d | 2026-11-06 10:00 | 2026-11-12 10:00 |  |  |  |  |
| 40 | S2.HU-113.SCRUM-63 | SCRUM-63 Modelado · HU-113 | 0.33d | 2026-11-06 10:00 | 2026-11-06 11:00 | 31 | 100% | start no earlier than 2026-11-02 08:00 | Duván Camilo Serrano Rojas |
| 41 | S2.HU-113.SCRUM-64 | SCRUM-64 Requerimientos · HU-113 | 0.33d | 2026-11-09 08:00 | 2026-11-09 09:00 | 40 | 100% |  | Duván Camilo Serrano Rojas |
| 42 | S2.HU-113.SCRUM-65 | SCRUM-65 Diseño · HU-113 | 0.67d | 2026-11-09 09:00 | 2026-11-09 11:00 | 41 | 100% |  | Duván Camilo Serrano Rojas |
| 43 | S2.HU-113.SCRUM-66 | SCRUM-66 Implementación · HU-113 | 1.67d | 2026-11-10 08:00 | 2026-11-11 10:00 | 42, 12 | 100% |  | Duván Camilo Serrano Rojas |
| 44 | S2.HU-113.SCRUM-67 | SCRUM-67 Pruebas · HU-113 | 0.67d | 2026-11-11 10:00 | 2026-11-12 09:00 | 43 | 100% |  | Duván Camilo Serrano Rojas |
| 45 | S2.HU-113.SCRUM-68 | SCRUM-68 Entrega · HU-113 | 0.33d | 2026-11-12 09:00 | 2026-11-12 10:00 | 44 | 100% | finish no later than 2026-11-13 11:00 | Duván Camilo Serrano Rojas |
| 46 | S3 | **Sprint 3 · Flujo de catálogo** | 10d | 2026-11-16 08:00 | 2026-11-27 11:00 |  |  |  |  |
| 47 | S3.HU-117 | **HU-117 Medir calidad (paquete 1.5.3) (1.5.3)** | 8d | 2026-11-16 08:00 | 2026-11-25 11:00 |  |  |  |  |
| 48 | S3.HU-117.SCRUM-87 | SCRUM-87 Modelado · HU-117 | 0.33d | 2026-11-16 08:00 | 2026-11-16 09:00 | 45 |  | start no earlier than 2026-11-16 08:00 | Duván Camilo Serrano Rojas |
| 49 | S3.HU-117.SCRUM-88 | SCRUM-88 Requerimientos · HU-117 | 0.67d | 2026-11-16 09:00 | 2026-11-16 11:00 | 48 |  |  | Duván Camilo Serrano Rojas |
| 50 | S3.HU-117.SCRUM-89 | SCRUM-89 Diseño · HU-117 | 1d | 2026-11-17 08:00 | 2026-11-17 11:00 | 49 |  |  | Duván Camilo Serrano Rojas |
| 51 | S3.HU-117.SCRUM-90 | SCRUM-90 Implementación · HU-117 | 2d | 2026-11-18 08:00 | 2026-11-19 11:00 | 50, 15 |  |  | Duván Camilo Serrano Rojas |
| 52 | S3.HU-117.SCRUM-91 | SCRUM-91 Pruebas · HU-117 | 3.33d | 2026-11-20 08:00 | 2026-11-25 09:00 | 51 |  |  | Duván Camilo Serrano Rojas |
| 53 | S3.HU-117.SCRUM-92 | SCRUM-92 Entrega · HU-117 | 0.67d | 2026-11-25 09:00 | 2026-11-25 11:00 | 52 |  | finish no later than 2026-11-27 11:00 | Duván Camilo Serrano Rojas |

Notes:
- 25: Jira SCRUM-25. Responsable: Duván. Depende de: HU-105.
- 26: Subtarea de Jira SCRUM-81. Responsable: Duván.
- 27: Subtarea de Jira SCRUM-82. Responsable: Duván.
- 28: Subtarea de Jira SCRUM-83. Responsable: Duván.
- 29: Subtarea de Jira SCRUM-84. Responsable: Duván.
- 30: Subtarea de Jira SCRUM-85. Responsable: Duván.
- 31: Subtarea de Jira SCRUM-86. Responsable: Duván.
- 32: Jira SCRUM-23. Responsable: Nicolás. Depende de: HU-111, HU-116.
- 33: Subtarea de Jira SCRUM-69. Responsable: Nicolás.
- 34: Subtarea de Jira SCRUM-70. Responsable: Nicolás.
- 35: Subtarea de Jira SCRUM-71. Responsable: Nicolás.
- 36: Subtarea de Jira SCRUM-72. Responsable: Nicolás.
- 37: Subtarea de Jira SCRUM-73. Responsable: Nicolás.
- 38: Subtarea de Jira SCRUM-74. Responsable: Nicolás.
- 39: Jira SCRUM-22. Responsable: Duván. Depende de: HU-108.
- 40: Subtarea de Jira SCRUM-63. Responsable: Duván.
- 41: Subtarea de Jira SCRUM-64. Responsable: Duván.
- 42: Subtarea de Jira SCRUM-65. Responsable: Duván.
- 43: Subtarea de Jira SCRUM-66. Responsable: Duván.
- 44: Subtarea de Jira SCRUM-67. Responsable: Duván.
- 45: Subtarea de Jira SCRUM-68. Responsable: Duván.
- 47: Jira SCRUM-26. Responsable: Duván. Depende de: HU-111.
- 48: Subtarea de Jira SCRUM-87. Responsable: Duván.
- 49: Subtarea de Jira SCRUM-88. Responsable: Duván.
- 50: Subtarea de Jira SCRUM-89. Responsable: Duván.
- 51: Subtarea de Jira SCRUM-90. Responsable: Duván.
- 52: Subtarea de Jira SCRUM-91. Responsable: Duván.
- 53: Subtarea de Jira SCRUM-92. Responsable: Duván.

| ID | WBS | Task | Duration | Start | Finish | Predecessors | Constraint | Resources |
| --- | --- | --- | --- | --- | --- | --- | --- | --- |
| 54 | S3.HU-101 | **HU-101 Publicar producto (CU-01)** | 6.33d | 2026-11-16 08:00 | 2026-11-24 09:00 |  |  |  |
| 55 | S3.HU-101.SCRUM-27 | SCRUM-27 Modelado · HU-101 | 0.67d | 2026-11-16 08:00 | 2026-11-16 10:00 | 38 | start no earlier than 2026-11-16 08:00 | Nicolás Santiago Cancimance Pabón |
| 56 | S3.HU-101.SCRUM-28 | SCRUM-28 Requerimientos · HU-101 | 0.67d | 2026-11-16 10:00 | 2026-11-17 09:00 | 55 |  | Nicolás Santiago Cancimance Pabón |
| 57 | S3.HU-101.SCRUM-29 | SCRUM-29 Diseño · HU-101 | 1d | 2026-11-17 09:00 | 2026-11-18 09:00 | 56 |  | Nicolás Santiago Cancimance Pabón |
| 58 | S3.HU-101.SCRUM-30 | SCRUM-30 Implementación · HU-101 | 2.67d | 2026-11-18 09:00 | 2026-11-20 11:00 | 57, 31, 8, 15 |  | Nicolás Santiago Cancimance Pabón |
| 59 | S3.HU-101.SCRUM-31 | SCRUM-31 Pruebas · HU-101 | 1d | 2026-11-23 08:00 | 2026-11-23 11:00 | 58 |  | Nicolás Santiago Cancimance Pabón |
| 60 | S3.HU-101.SCRUM-32 | SCRUM-32 Entrega · HU-101 | 0.33d | 2026-11-24 08:00 | 2026-11-24 09:00 | 59 | finish no later than 2026-11-27 11:00 | Nicolás Santiago Cancimance Pabón |
| 61 | ACT-04 | ACT-04 Cierre del proyecto: resultados de pruebas, informe de usabilidad y lista de pendientes | 2d | 2026-11-26 08:00 | 2026-11-27 11:00 | 60, 53 | finish no later than 2026-11-27 11:00 | Nicolás Santiago Cancimance Pabón; Duván Camilo Serrano Rojas |

Notes:
- 54: Jira SCRUM-10. Responsable: Nicolás. Depende de: HU-104, HU-116, HU-111.
- 55: Subtarea de Jira SCRUM-27. Responsable: Nicolás.
- 56: Subtarea de Jira SCRUM-28. Responsable: Nicolás.
- 57: Subtarea de Jira SCRUM-29. Responsable: Nicolás.
- 58: Subtarea de Jira SCRUM-30. Responsable: Nicolás.
- 59: Subtarea de Jira SCRUM-31. Responsable: Nicolás.
- 60: Subtarea de Jira SCRUM-32. Responsable: Nicolás.
- 61: Supuesto del equipo: 2 días hábiles de ambos integrantes (12 horas-persona); no está estimada en Jira.
